# gantt

Schedule from MS Project, 2020-05-03 to 2020-08-23, costs in ₪.

## Calendars

- Standard: Mon-Thu 08:00-12:00, 13:00-17:00; Fri-Sat off; Sun 08:00-17:00. Exceptions (off unless hours are given): 2020-05-11 (ערב ל"ג בעומר), 2020-05-12 (ל"ג בעומר), 2020-05-28 (ערב שבועות), 2020-05-29 (שבועות), 2020-07-09 (צום שבעה עשר בתמוז), 2020-07-29 (ערב תשעה באב), 2020-07-30 (צום תשעה באב), 2020-08-05 (ט"ו באב).

## Resources

| Resource | Unit | Rate |
| --- | --- | --- |
| מנהל פרויקט |  | 80 |
| א. קשרי לקוח ומנהל שטח |  | 70 |
| מנהל לו"ז ותיאום |  | 65 |
| מנהל תקציב |  | 65 |
| א. ציוד פנים |  | 60 |
| מנהל ספקים |  | 65 |
| מ.ע. בטיחות |  | 50 |
| כיסא | יחידה | 3 |
| סבל חברה |  | 29 |
| ספק בית דפוס ועיצוב |  | 200 |
| מנהל יחסי ציבור |  | 50 |
| ספק סדרנים |  | 29 |
| ספק ניקיון |  | 29 |
| שולחנות | יחידה | 15 |
| שירות קייטרינג | מנה | 120 |
| ספק במה הגברה ותאורה | אירוע | 6000 |
| ספק גדרות | מטר | 15 |
| שירות שאטלים |  | 250 |

## Schedule

| ID | WBS | Task | Type | Duration | Start | Finish | Predecessors | Total slack | Free slack | Resources | Work | Cost |
| --- | --- | --- | --- | --- | --- | --- | --- | --- | --- | --- | --- | --- |
| 1 | 1 | **התנעת הפרויקט** |  | 15.5d | 2020-05-03 | 2020-05-25 |  | 0d |  |  | 376h | 27,160 |
| 2 | 1.1 | **בניית צוות אחראי:** |  | 2d | 2020-05-03 | 2020-05-04 |  | 0d |  |  | 64h | 4,280 |
| 3 | 1.1.1 | מינוי אחראיים ראשיים |  | 1d | 2020-05-03 | 2020-05-03 |  | 0d |  | מנהל פרויקט | 8h | 640 |
| 4 | 1.1.2 | מפגש התנעה |  | 1d | 2020-05-03 | 2020-05-04 | 3 | 0d |  | מנהל תקציב; מנהל פרויקט; מנהל ספקים; מנהל לו"ז ותיאום; מ.ע. בטיחות; א. קשרי לקוח ומנהל שטח; א. ציוד פנים | 56h | 3,640 |
| 5 | 1.2 | **תכנון ראשוני:** |  | 12d | 2020-05-04 | 2020-05-24 |  | 0d |  |  | 276h | 18,680 |
| 6 | 1.2.1 | מפגש ראשוני עם בעלי העניין |  | 0.5d | 2020-05-04 | 2020-05-05 | 4 | 0d |  | א. קשרי לקוח ומנהל שטח | 4h | 280 |
| 7 | 1.2.2 | התייעצות עם גורמים רלוונטיים |  | 2.5d | 2020-05-05 | 2020-05-07 | 6 | 0d |  | מנהל תקציב; מנהל פרויקט; מנהל ספקים; מנהל לו"ז ותיאום; מ.ע. בטיחות; א. קשרי לקוח ומנהל שטח; א. ציוד פנים | 140h | 9,100 |
| 8 | 1.2.3 | תאריכים אופציונליים |  | 2d | 2020-05-07 | 2020-05-13 | 7 | 0d |  | מנהל לו"ז ותיאום [50%] | 8h | 520 |
| 9 | 1.2.4 | מקומות אופציונליים |  | 7d | 2020-05-07 | 2020-05-20 | 8SS | 0d |  | מנהל לו"ז ותיאום [50%] | 28h | 1,820 |
| 10 | 1.2.5 | הערכת כמויות |  | 3d | 2020-05-07 | 2020-05-14 | 7 | 4d |  | מנהל פרויקט; א. קשרי לקוח ומנהל שטח | 48h | 3,600 |
| 11 | 1.2.6 | הערכת זמנים ראשונית |  | 2d | 2020-05-20 | 2020-05-24 | 9, 10 | 0d |  | מנהל לו"ז ותיאום; מנהל פרויקט [50%]; א. קשרי לקוח ומנהל שטח [50%] | 32h | 2,240 |
| 12 | 1.2.7 | עיקרי תקציב ויעד לגיוס |  | 1d | 2020-05-20 | 2020-05-21 | 9, 10, 11SS | 0d |  | א. קשרי לקוח ומנהל שטח [50%]; מנהל פרויקט [50%]; מנהל תקציב | 16h | 1,120 |
| 13 | 1.3 | **הכנת ההצגה לאוניברסיטה/בעלי העניין** |  | 3d | 2020-05-20 | 2020-05-25 |  | 0d |  |  | 36h | 4,200 |
| 14 | 1.3.1 | החלטה על עיקרי ההצגה – הסבר על האירוע והדרישות לאירוע |  | 1d | 2020-05-21 | 2020-05-24 | 12 | 0d |  | א. קשרי לקוח ומנהל שטח [50%]; מנהל פרויקט [50%] | 8h | 600 |
| 15 | 1.3.2 | הכנת המצגת |  | 2d | 2020-05-20 | 2020-05-24 | 14FF | 0d |  | ספק בית דפוס ועיצוב [50%] | 8h | 1,600 |
| 16 | 1.3.3 | תיקונים (אפשריים) |  | 1d | 2020-05-24 | 2020-05-25 | 15 | 0d |  | א. קשרי לקוח ומנהל שטח; מנהל פרויקט; ספק בית דפוס ועיצוב [50%] | 20h | 2,000 |
| 17 | 1.4 | אישור על המשך הפרויקט וחיתוך מצב | milestone | 0.5d | 2020-05-25 | 2020-05-25 | 16 | 0d |  |  |  |  |
| 19 | 2 | **היערכות מקדימה** |  | 27.38d | 2020-05-26 | 2020-07-02 |  | 0d |  |  | 300h | 19,780 |
| 20 | 2.1 | **בחירת תאריך** |  | 3.5d | 2020-05-26 | 2020-06-01 |  | 0d |  |  | 28h | 1,960 |
| 21 | 2.1.1 | תיאום אפשרויות עם האוניברסיטה |  | 3d | 2020-05-26 | 2020-06-01 | 17 | 0d |  | א. קשרי לקוח ומנהל שטח | 24h | 1,680 |
| 22 | 2.1.2 | בחירת התאריך האופטימלי |  | 0.5d | 2020-05-26 | 2020-05-26 | 17 | 0d |  | א. קשרי לקוח ומנהל שטח | 4h | 280 |
| 23 | 2.2 | **בחירת מיקום** |  | 17.88d | 2020-06-01 | 2020-06-24 |  | 0d |  |  | 196h | 13,120 |
| 24 | 2.2.1 | איסוף מידע אודות המיקומים האפשריים |  | 8d | 2020-06-01 | 2020-06-11 | 21 | 0d |  | מנהל לו"ז ותיאום | 64h | 4,160 |
| 25 | 2.2.2 | קבלת כמות המשתתפים |  | 0.5d | 2020-06-10 | 2020-06-11 | 24FF | 20.88d | 0d | א. קשרי לקוח ומנהל שטח | 4h | 280 |
| 26 | 2.2.3 | בחינת התאמה בין המקומות ליכולת ההגעה של המשתתפים |  | 2d | 2020-06-14 | 2020-06-16 | 24 | 0d |  | מנהל תקציב; א. קשרי לקוח ומנהל שטח [50%]; מנהל לו"ז ותיאום | 40h | 2,640 |
| 27 | 2.2.4 | בחינת ההתאמה לכמות המשתתפים הצפויה |  | 1d | 2020-06-16 | 2020-06-17 | 24, 26 | 0d |  | א. קשרי לקוח ומנהל שטח; מנהל לו"ז ותיאום | 16h | 1,080 |
| 28 | 2.2.5 | השוואה בין החלופות |  | 3d | 2020-06-21 | 2020-06-23 | 27 | 0d |  | א. קשרי לקוח ומנהל שטח; מנהל לו"ז ותיאום | 48h | 3,240 |
| 29 | 2.2.6 | הצגת החלופות |  | 0.5d | 2020-06-23 | 2020-06-24 | 28 | 0d |  | א. קשרי לקוח ומנהל שטח; מנהל לו"ז ותיאום; מנהל פרויקט | 12h | 860 |
| 30 | 2.2.7 | בחירת החלופה האופטימלית |  | 0.5d | 2020-06-24 | 2020-06-24 | 29 | 0d |  | מנהל לו"ז ותיאום; א. קשרי לקוח ומנהל שטח; מנהל פרויקט | 12h | 860 |

| ID | WBS | Task | Type | Duration | Start | Finish | Predecessors | Total slack | Free slack | Constraint | Resources | Work | Cost |
| --- | --- | --- | --- | --- | --- | --- | --- | --- | --- | --- | --- | --- | --- |
| 31 | 2.3 | **בחירת ספקים ונותני שירות** |  | 15.38d | 2020-06-11 | 2020-07-02 |  | 6.5d | 0.5d |  |  | 48h | 2,840 |
| 32 | 2.3.1 | בירור הצורך מול האוניברסיטה לפי הסטנדרטים שלהם, לרבות תפריט וכמויות המזון |  | 1d | 2020-06-11 | 2020-06-14 | 25 | 20.88d |  |  | א. קשרי לקוח ומנהל שטח [50%] | 4h | 280 |
| 33 | 2.3.2 | בחינת הספקים השונים ונותני השירות |  | 5d | 2020-06-24 | 2020-07-01 | 30 | 0d |  |  | מנהל ספקים [50%]; מ.ע. בטיחות [50%] | 40h | 2,300 |
| 34 | 2.3.3 | ביצוע הזמנה מספקים ונותני השירות |  | 0.5d | 2020-07-01 | 2020-07-02 | 33 | 0d |  |  | מנהל ספקים | 4h | 260 |
| 35 | 2.4 | גיבוש רשימת משתתפים סופית |  | 0.5d | 2020-06-28 | 2020-06-28 |  | 20.88d | 3.88d | start no earlier than 2020-06-28 | א. קשרי לקוח ומנהל שטח | 4h | 280 |
| 36 | 2.5 | חיתוך מצב | milestone | 0.5d | 2020-07-02 | 2020-07-02 | 34, 35 | 0d |  |  | מנהל ספקים; מנהל לו"ז ותיאום; מנהל תקציב; מנהל פרויקט; א. קשרי לקוח ומנהל שטח; מ.ע. בטיחות | 24h | 1,580 |
| 38 | 3 | **תכנון האירוע** |  | 19d | 2020-07-02 | 2020-08-03 | 36 | 0d |  |  |  | 141.01h | 14,965.64 |
| 39 | 3.1 | **תכנון לוז ספקים כולל תיאום לוגיסטי ואישור מהלקוח** |  | 1d | 2020-07-02 | 2020-07-05 | 31 | 6d |  |  |  | 15.68h | 1,059.2 |
| 40 | 3.1.1 | צוותי ניקוי |  | 1d | 2020-07-02 | 2020-07-05 |  | 6d |  |  | מנהל ספקים [16%] | 1.28h | 83.2 |
| 41 | 3.1.2 | סדרנים |  | 1d | 2020-07-02 | 2020-07-05 |  | 6d |  |  | מנהל ספקים [16%] | 1.28h | 83.2 |
| 42 | 3.1.3 | תיאום שאטלים מהרכבת |  | 1d | 2020-07-02 | 2020-07-05 |  | 6d |  |  | מנהל ספקים [16%] | 1.28h | 83.2 |
| 43 | 3.1.4 | שירותי קייטרינג |  | 1d | 2020-07-02 | 2020-07-05 |  | 6d |  |  | מנהל ספקים [16%] | 1.28h | 83.2 |
| 44 | 3.1.5 | תיחום גדר לאירוע |  | 1d | 2020-07-02 | 2020-07-05 |  | 6d |  |  | מנהל ספקים [16%] | 1.28h | 83.2 |
| 45 | 3.1.6 | חניות |  | 1d | 2020-07-02 | 2020-07-05 |  | 6d |  |  | א. קשרי לקוח ומנהל שטח | 8h | 560 |
| 46 | 3.1.7 | הגברה, במה ותאורה |  | 1d | 2020-07-02 | 2020-07-05 |  | 6d |  |  | מנהל ספקים [16%] | 1.28h | 83.2 |
| 47 | 3.2 | **ארגון הזמנות לסטודנטים ואורחיהם** |  | 19d | 2020-07-02 | 2020-08-03 |  | 0d |  |  |  | 24h | 4,280 |
| 48 | 3.2.1 | עיצוב הזמנות ואישור לקוח |  | 4d | 2020-07-02 | 2020-07-08 |  | 0d |  |  | ספק בית דפוס ועיצוב [50%] | 16h | 3,200 |
| 49 | 3.2.2 | הדפסת הזמנות |  | 0.5d | 2020-07-08 | 2020-07-12 | 48 | 0d |  |  | ספק בית דפוס ועיצוב | 4h | 800 |
| 50 | 3.2.3 | מסירת הזמנות מוכנות להפצה ע"י הלקוח |  | 0.5d | 2020-07-12 | 2020-07-12 | 49 | 0d |  |  | א. קשרי לקוח ומנהל שטח | 4h | 280 |
| 51 | 3.2.4 | תקופת חלוקת הזמנות (באחריות הלקוח) |  | 14d | 2020-07-12 | 2020-08-03 | 50 | 0d |  |  |  |  |  |
| 52 | 3.3 | **יחסי ציבור לאירוע** |  | 17d | 2020-07-02 | 2020-07-28 |  | 0d |  |  |  | 73.33h | 7,866.44 |
| 53 | 3.3.1 | גיבוש קמפיין פרסום ואישור לקוח |  | 7d | 2020-07-02 | 2020-07-14 |  | 0d |  |  | מנהל יחסי ציבור [33.3%]; ספק בית דפוס ועיצוב [50%] | 46.66h | 6,533.24 |
| 54 | 3.3.2 | פרסום ברשתות החברתיות ובסביבת האוניברסיטה |  | 10d | 2020-07-14 | 2020-07-28 | 53 | 2d |  |  | מנהל יחסי ציבור [33.3%] | 26.66h | 1,333.2 |
| 55 | 3.4 | חיתוך מצב | milestone | 0.5d | 2020-07-14 | 2020-07-14 | 39, 53 | 0d |  |  | מנהל יחסי ציבור; מנהל פרויקט; א. קשרי לקוח ומנהל שטח; מנהל ספקים; מנהל לו"ז ותיאום; מ.ע. בטיחות; א. ציוד פנים | 28h | 1,760 |

| ID | WBS | Task | Duration | Start | Finish | Predecessors | Total slack | Free slack | Constraint | Resources | Work | Cost |
| --- | --- | --- | --- | --- | --- | --- | --- | --- | --- | --- | --- | --- |
| 57 | 4 | **ביצוע (במקביל לתכנון)** | 10.68d | 2020-07-20 | 2020-08-06 |  | 0d |  |  |  | 195.73h | 73,014.66 |
| 58 | 4.1 | **הקמת תשתיות** | 7d | 2020-07-20 | 2020-07-28 | 39 | 1.38d |  |  |  | 64h | 12,896 |
| 59 | 4.1.1 | תיחום אזור האירוע (גדר) | 1d | 2020-07-20 | 2020-07-20 | 36 | 6.38d | 5d | start no earlier than 2020-07-20 | ספק גדרות [200 מטר] |  | 3,000 |
| 60 | 4.1.2 | הקמת מקומות ישיבה | 1d | 2020-07-22 | 2020-07-22 |  | 3.88d | 0d | start no earlier than 2020-07-22 | סבל חברה [500%]; א. ציוד פנים; כיסא [450 יחידה] | 48h | 2,990 |
| 61 | 4.1.3 | הקמת שולחנות לעמדות קייטרינג | 0.5d | 2020-07-23 | 2020-07-23 | 60 | 3.88d | 2.5d |  | א. ציוד פנים; סבל חברה; שולחנות [10 יחידה] | 8h | 506 |
| 62 | 4.1.4 | התקנת במה תאורה ושמע | 2d | 2020-07-26 | 2020-07-27 |  | 1.38d | 0d | start no earlier than 2020-07-26 | ספק במה הגברה ותאורה [1 אירוע] |  | 6,000 |
| 63 | 4.1.5 | בדיקת בטיחות ואישור מוכנות התשתיות | 1d | 2020-07-27 | 2020-07-28 | 59, 60, 62, 61 | 1.38d |  | start no earlier than 2020-07-27 | מ.ע. בטיחות | 8h | 400 |
| 64 | 4.2 | **התכנסות** | 0.1d | 2020-08-03 | 2020-08-03 | 51, 54, 58 | 0d |  | start no earlier than 2020-08-02 |  | 1.6h | 108 |
| 65 | 4.2.1 | הוצאת רשימת משתתפים סופית לטובת בדיקת נוכחות | 0.1d | 2020-08-03 | 2020-08-03 | 63 | 0d |  |  | א. קשרי לקוח ומנהל שטח | 0.8h | 56 |
| 66 | 4.2.2 | וידוא הגעה של כלל הצוותים | 0.1d | 2020-08-03 | 2020-08-03 | 63 | 0.1d |  |  | מנהל ספקים | 0.8h | 52 |
| 67 | 4.3 | **הגעת ספקים ונותני שירות** | 0.5d | 2020-08-03 | 2020-08-03 | 64SS | 0d |  |  |  | 31.2h | 55,900 |
| 68 | 4.3.1 | הפעלת שאטלים | 0.5d | 2020-08-03 | 2020-08-03 |  | 0d |  |  | שירות שאטלים | 4h | 1,000 |
| 69 | 4.3.2 | פריסת קייטרניג | 0.1d | 2020-08-03 | 2020-08-03 | 64SS | 0d |  |  | שירות קייטרינג [450 מנה] |  | 54,000 |
| 70 | 4.3.3 | פעילות סדרנים | 0.5d | 2020-08-03 | 2020-08-03 |  | 0d |  |  | ספק סדרנים [600%] | 24h | 696 |
| 71 | 4.3.4 | וידוא תקינות קבלת סחורה | 0.1d | 2020-08-03 | 2020-08-03 | 66SS, 69 | 0d |  |  | א. קשרי לקוח ומנהל שטח | 0.8h | 56 |
| 72 | 4.3.5 | תדרוך ספקים ונותני שירות | 0.1d | 2020-08-03 | 2020-08-03 | 66, 71 | 0d |  |  | מנהל ספקים; א. קשרי לקוח ומנהל שטח; מ.ע. בטיחות | 2.4h | 148 |
| 73 | 4.4 | **בקרה שוטפת** | 0.5d | 2020-08-03 | 2020-08-03 | 67SS | 0d |  |  |  | 13.33h | 806.66 |
| 74 | 4.4.1 | ניטור פעילות ספקים ונותני שירות | 0.5d | 2020-08-03 | 2020-08-03 | 72SS | 0.1d |  |  | א. קשרי לקוח ומנהל שטח; מנהל ספקים | 8h | 540 |
| 75 | 4.4.2 | וידוא עמידה בתקני בטיחות | 0.5d | 2020-08-03 | 2020-08-03 | 72SS | 0.1d |  |  | מ.ע. בטיחות | 4h | 200 |
| 76 | 4.4.3 | תיעוד האירוע ליח"צ | 0.5d | 2020-08-03 | 2020-08-03 | 72SS | 0d |  |  | מנהל יחסי ציבור [33.3%] | 1.33h | 66.66 |
| 77 | 4.5 | **סיום האירוע** | 0.1d | 2020-08-03 | 2020-08-03 | 73 | 0d |  | start no earlier than 2020-08-02 |  | 1.6h | 108 |
| 78 | 4.5.1 | הפסקת פעילות ספקים ונותני שירות | 0.1d | 2020-08-03 | 2020-08-03 | 74FF | 0d |  |  | מנהל ספקים | 0.8h | 52 |
| 79 | 4.5.2 | וידוא עזיבת כלל האורחים | 0.1d | 2020-08-03 | 2020-08-03 | 75FF | 0d |  |  | א. קשרי לקוח ומנהל שטח | 0.8h | 56 |
| 80 | 4.6 | **סיכום וסיום פעילות** | 1.5d | 2020-08-03 | 2020-08-06 | 77 | 0d |  |  |  | 84h | 3,196 |
| 81 | 4.6.1 | הסרת תשתיות | 1d | 2020-08-03 | 2020-08-04 |  | 0d |  |  | סבל חברה [500%]; א. ציוד פנים | 48h | 1,640 |
| 82 | 4.6.2 | ניקיון המתחם | 0.5d | 2020-08-04 | 2020-08-06 | 81 | 0d |  |  | ספק ניקיון [600%] | 24h | 696 |
| 83 | 4.6.3 | שיחה מסכמת על הלקוח | 0.5d | 2020-08-04 | 2020-08-06 | 81 | 0d |  |  | א. קשרי לקוח ומנהל שטח; מנהל פרויקט | 8h | 600 |
| 84 | 4.6.4 | תשלום לספקים ולנותני שירות | 0.5d | 2020-08-04 | 2020-08-06 | 81 | 0d |  |  | מנהל תקציב | 4h | 260 |
| 86 | 5 | BUFFER | 11d | 2020-08-06 | 2020-08-23 | 81, 83, 84 | 0d |  |  |  |  |  |
